# GaleriaDevoto-SitioWeb-2014

Schedule from MS Project, 2014-05-19 to 2014-07-14, A marks actual dates.
Project para la construcción del sitio web para desktop y mobile (2014)

## Calendars

- Estándar: Mon-Fri 09:00-13:00, 15:00-19:00; Sat-Sun off. Exceptions (off unless hours are given): 2014-05-31 09:00-13:00, 15:00-19:00, 2014-06-07 09:00-13:00, 15:00-19:00.

## Resources

| Resource |
| --- |
| Miriam |
| Gustavo |
| Tamara |
| Dani |
| Gusta |
| Gonzalo |

## Schedule

| ID | WBS | Task | Duration | Start | Finish | Predecessors | Complete | Remaining | Total slack | Free slack | Constraint | Resources | Work | Actual work |
| --- | --- | --- | --- | --- | --- | --- | --- | --- | --- | --- | --- | --- | --- | --- |
| 1 | 1 | **Tareas Comunes** | 43d? | 2014-05-19 09:00 A | 2014-07-14 19:00 |  | 3% | 41.74d? | 0d |  |  |  | 345h | 4h |
| 2 | 1.1 | Obtener listado completo de locales | 1h | 2014-05-19 09:00 A | 2014-05-19 10:00 A |  | 100% |  |  |  | start no earlier than 2014-05-19 09:00 | Miriam | 1h | 1h |
| 3 | 1.2 | Sacar fotos de locales | 2h | 2014-05-28 16:00 A | 2014-05-28 18:00 |  | 50% | 1h | 35.12d |  | finish no earlier than 2014-05-28 18:00 | Gustavo | 2h | 1h |
| 4 | 1.3 | Sacar fotos de galería | 4h? | 2014-05-28 12:00 | 2014-05-28 18:00 |  |  |  | 35.12d |  | finish no earlier than 2014-05-28 18:00 | Gustavo | 4h |  |
| 5 | 1.4 | Tomar snapshot de indicadores (sitio web viejo) | 4h? | 2014-06-20 09:00 | 2014-06-20 13:00 | 42, 21 |  |  | 16.5d |  | start no earlier than 2014-05-21 09:00 | Gustavo | 4h |  |
| 6 | 1.5 | Configurar el control de código | 1h | 2014-05-23 09:00 A | 2014-05-23 10:00 A |  | 100% |  |  |  | start no earlier than 2014-05-23 09:00 | Gustavo | 1h | 1h |
| 7 | 1.6 | Detectar user agent con asp.net y redirigir a sitio correcto | 8h? | 2014-05-27 09:00 | 2014-05-27 19:00 |  |  |  | 36d |  | start no earlier than 2014-05-27 09:00 | Gustavo | 8h |  |
| 8 | 1.7 | Preparar el hosting Dattatec para funcionar con ASP.NET | 1h | 2014-05-27 09:00 A | 2014-05-27 10:00 A |  | 100% |  |  |  | start no earlier than 2014-05-27 09:00 | Gustavo | 1h | 1h |
| 9 | 1.8 | Validar código HTML | 8h? | 2014-07-07 09:00 | 2014-07-07 19:00 | 15, 49 |  |  | 4.5d | 0d | start no earlier than 2014-05-21 09:00 | Gustavo | 8h |  |
| 10 | 1.9 | Validar código CSS | 8h? | 2014-07-07 09:00 | 2014-07-07 19:00 | 15, 49 |  |  | 4.5d | 0d | start no earlier than 2014-05-21 09:00 | Gustavo | 8h |  |
| 11 | 1.10 | Agregar validaciones HTML y CSS exitosas al sitio web | 4h? | 2014-07-08 09:00 | 2014-07-08 13:00 | 9, 10 |  |  | 4.5d |  | start no earlier than 2014-05-21 09:00 | Gustavo | 4h |  |
| 12 | 1.11 | Obtener descripción detallada de locales | 40h? | 2014-05-19 09:00 | 2014-05-23 19:00 |  |  |  | 38d |  |  | Gustavo; Tamara; Dani | 120h |  |
| 13 | 1.12 | Obtener productos promocionados por local | 40h? | 2014-05-19 09:00 | 2014-05-23 19:00 |  |  |  | 38d |  |  | Gustavo; Tamara; Dani | 120h |  |
| 14 | 1.13 | Prueba UAT (Aceptación de usuario) | 16h? | 2014-07-11 09:00 | 2014-07-14 19:00 | 15, 49, 59, 62 |  |  | 0d |  |  | Dani; Miriam; Tamara; Gustavo | 64h |  |
| 15 | 2 | **Construcción de nuevo sitio web desktop** | 22d? | 2014-05-26 09:00 A | 2014-06-20 19:00 |  |  | 21.91d? | 8d | 0d |  |  | 434h | 2h |
| 16 | 2.1 | Realizar boceto de sitio web en programa de diseño gráfico | 8h? | 2014-05-26 09:00 | 2014-05-26 19:00 |  |  |  | 29d |  | start no earlier than 2014-05-26 09:00 | Tamara | 8h |  |
| 17 | 2.2 | Definir colores | 2h? | 2014-05-27 09:00 | 2014-05-27 11:00 |  |  |  | 28.75d |  | start no earlier than 2014-05-27 09:00 | Tamara | 2h |  |
| 18 | 2.3 | Definir tipo y tamaño de fuente | 2h? | 2014-05-28 09:00 | 2014-05-28 11:00 |  |  |  | 27.75d |  | start no earlier than 2014-05-28 09:00 | Tamara | 2h |  |
| 19 | 2.4 | Definir resolución mínima sin scroll | 1h | 2014-05-29 09:00 A | 2014-05-29 10:00 A |  | 100% |  |  |  | start no earlier than 2014-05-29 09:00 | Gustavo; Tamara | 2h | 2h |
| 20 | 2.5 | Prueba integral en navegadores | 8h? | 2014-06-20 09:00 | 2014-06-20 19:00 | 21, 42 |  |  | 8d |  |  | Gustavo | 8h |  |
| 21 | 2.6 | **Páginas web principales** | 5.12d? | 2014-05-30 09:00 | 2014-06-05 10:00 |  |  |  | 19.88d | 11.88d |  |  | 60h |  |
| 22 | 2.6.1 | **Home** | 4d? | 2014-05-30 09:00 | 2014-06-03 19:00 |  |  |  | 21d |  |  |  | 30h |  |
| 23 | 2.6.1.1 | Definir título | 1h? | 2014-05-30 09:00 | 2014-05-30 10:00 |  |  |  | 24.88d |  | start no earlier than 2014-05-30 09:00 | Gustavo; Tamara; Dani | 3h |  |
| 24 | 2.6.1.2 | Definir descripción | 1h? | 2014-05-30 09:00 | 2014-05-30 10:00 |  |  |  | 24.88d |  | start no earlier than 2014-05-30 09:00 | Gustavo; Tamara; Dani | 3h |  |
| 25 | 2.6.1.3 | Definir contenido estático y dinámico | 8h? | 2014-05-31 09:00 | 2014-05-31 19:00 |  |  |  | 22d | 1d | start no earlier than 2014-05-31 09:00 | Gustavo; Tamara | 16h |  |
| 26 | 2.6.1.4 | Construir MasterPage Principal | 8h? | 2014-06-03 09:00 | 2014-06-03 19:00 | 25 |  |  | 21d |  | start no earlier than 2014-06-03 09:00 | Gustavo | 8h |  |

| ID | WBS | Task | Duration | Start | Finish | Predecessors | Total slack | Free slack | Constraint | Resources | Work |
| --- | --- | --- | --- | --- | --- | --- | --- | --- | --- | --- | --- |
| 27 | 2.6.2 | **Contacto** | 2.12d? | 2014-06-02 09:00 | 2014-06-04 10:00 |  | 20.88d |  |  |  | 12h |
| 28 | 2.6.2.1 | Definir título | 1h? | 2014-06-04 09:00 | 2014-06-04 10:00 |  | 20.88d |  | start no earlier than 2014-06-04 09:00 | Gustavo; Tamara; Dani | 3h |
| 29 | 2.6.2.2 | Definir descripción | 1h? | 2014-06-04 09:00 | 2014-06-04 10:00 |  | 20.88d |  | start no earlier than 2014-06-04 09:00 | Gustavo; Tamara; Dani | 3h |
| 30 | 2.6.2.3 | Agregar la información que aparece en página ubicación | 2h? | 2014-06-02 09:00 | 2014-06-02 11:00 |  | 22.75d |  | start no earlier than 2014-06-02 09:00 | Tamara | 2h |
| 31 | 2.6.2.4 | Actualizar transporte público | 1h? | 2014-06-02 09:00 | 2014-06-02 10:00 |  | 22.88d |  | start no earlier than 2014-06-02 09:00 | Tamara | 1h |
| 32 | 2.6.2.5 | Agregar link a fan page Facebook | 2h? | 2014-06-02 09:00 | 2014-06-02 11:00 |  | 22.75d |  | start no earlier than 2014-06-02 09:00 | Tamara | 2h |
| 33 | 2.6.2.6 | Aclarar horarios de atención al público y de administración | 1h? | 2014-06-02 09:00 | 2014-06-02 10:00 |  | 22.88d |  | start no earlier than 2014-06-02 09:00 | Tamara | 1h |
| 34 | 2.6.3 | **Villa Devoto** | 2.12d? | 2014-06-03 09:00 | 2014-06-05 10:00 |  | 19.88d |  |  |  | 10h |
| 35 | 2.6.3.1 | Definir título | 1h? | 2014-06-05 09:00 | 2014-06-05 10:00 |  | 19.88d |  | start no earlier than 2014-06-05 09:00 | Gustavo; Tamara; Dani | 3h |
| 36 | 2.6.3.2 | Definir descripción | 1h? | 2014-06-05 09:00 | 2014-06-05 10:00 |  | 19.88d |  | start no earlier than 2014-06-05 09:00 | Gustavo; Tamara; Dani | 3h |
| 37 | 2.6.3.3 | Agregar direcciones de los lugares | 4h? | 2014-06-03 09:00 | 2014-06-03 13:00 |  | 21.5d |  | start no earlier than 2014-06-03 09:00 | Tamara | 4h |
| 38 | 2.6.4 | **Error 404 (Not Found)** | 0.5d? | 2014-06-04 09:00 | 2014-06-04 13:00 |  | 20.5d |  |  |  | 8h |
| 39 | 2.6.4.1 | Definir estructura | 4h? | 2014-06-04 09:00 | 2014-06-04 13:00 |  | 20.5d |  | start no earlier than 2014-06-04 09:00 | Tamara | 4h |
| 40 | 2.6.4.2 | Definir imagen | 2h? | 2014-06-04 09:00 | 2014-06-04 11:00 |  | 20.75d |  | start no earlier than 2014-06-04 09:00 | Tamara | 2h |
| 41 | 2.6.4.3 | Definir texto | 2h? | 2014-06-04 09:00 | 2014-06-04 11:00 |  | 20.75d |  | start no earlier than 2014-06-04 09:00 | Tamara | 2h |
| 42 | 2.7 | **Páginas de locales** | 12d? | 2014-06-05 09:00 | 2014-06-19 19:00 |  | 8d | 0d |  |  | 352h |
| 43 | 2.7.1 | Definir títulos | 40h? | 2014-06-07 09:00 | 2014-06-12 19:00 |  | 13d |  | start no earlier than 2014-06-07 09:00 | Gustavo; Tamara; Dani | 120h |
| 44 | 2.7.2 | Definir descripciones | 40h? | 2014-06-07 09:00 | 2014-06-12 19:00 |  | 13d |  | start no earlier than 2014-06-07 09:00 | Gustavo; Tamara; Dani | 120h |
| 45 | 2.7.3 | Definir estructura de página | 8h? | 2014-06-05 09:00 | 2014-06-05 19:00 |  | 8d | 0d | start no earlier than 2014-06-05 09:00 | Gustavo; Tamara | 16h |
| 46 | 2.7.4 | Construir MasterPage Local | 8h? | 2014-06-06 09:00 | 2014-06-06 19:00 | 45 | 8d | 0d | start no earlier than 2014-06-06 09:00 | Gustavo | 8h |
| 47 | 2.7.5 | Buscar un slider de imágenes y aprender a usarlo | 8h? | 2014-06-07 09:00 | 2014-06-07 19:00 |  | 17d |  | start no earlier than 2014-06-07 09:00 | Gustavo | 8h |
| 48 | 2.7.6 | Construir páginas | 80h? | 2014-06-07 09:00 | 2014-06-19 19:00 | 46 | 8d |  | start no earlier than 2014-06-07 09:00 | Tamara | 80h |
| 49 | 3 | **Construcción de nuevo sitio web mobile** | 10d? | 2014-06-23 09:00 | 2014-07-04 19:00 | 15 | 3d | 0d |  |  | 96h |
| 50 | 3.1 | Realizar boceto de sitio web en programa de diseño gráfico | 8h? | 2014-06-23 09:00 | 2014-06-23 19:00 |  | 12d |  |  | Tamara | 8h |
| 51 | 3.2 | Definir colores | 2h? | 2014-06-24 09:00 | 2014-06-24 11:00 |  | 11.75d |  | start no earlier than 2014-06-24 09:00 | Tamara | 2h |
| 52 | 3.3 | Definir tipo y tamaño de fuente | 2h? | 2014-06-24 09:00 | 2014-06-24 11:00 |  | 11.75d |  | start no earlier than 2014-06-24 09:00 | Tamara | 2h |
| 53 | 3.4 | Definir estructura del sitio | 8h? | 2014-06-24 09:00 | 2014-06-24 19:00 |  | 11d |  | start no earlier than 2014-06-24 09:00 | Gustavo; Tamara | 16h |
| 54 | 3.5 | Definir páginas del sitio | 2h? | 2014-06-25 09:00 | 2014-06-25 11:00 |  | 10.75d |  | start no earlier than 2014-06-25 09:00 | Gustavo; Tamara | 4h |
| 55 | 3.6 | Construir página principal | 8h? | 2014-06-26 09:00 | 2014-06-26 19:00 |  | 9d |  | start no earlier than 2014-06-26 09:00 | Tamara | 8h |
| 56 | 3.7 | Construir página de locales | 40h? | 2014-06-27 09:00 | 2014-07-03 19:00 |  | 4d |  | start no earlier than 2014-06-27 09:00 | Tamara | 40h |
| 57 | 3.8 | Construir página de contacto | 8h? | 2014-07-04 09:00 | 2014-07-04 19:00 |  | 3d |  | start no earlier than 2014-07-04 09:00 | Tamara | 8h |
| 58 | 3.9 | Prueba integral en navegadores mobile | 8h? | 2014-07-04 09:00 | 2014-07-04 19:00 |  | 3d |  | start no earlier than 2014-07-04 09:00 | Gustavo | 8h |

| ID | WBS | Task | Duration | Start | Finish | Predecessors | Complete | Remaining | Total slack | Constraint | Resources | Work | Actual work |
| --- | --- | --- | --- | --- | --- | --- | --- | --- | --- | --- | --- | --- | --- |
| 59 | 4 | **Actualización de datos en Google Places** | 0.25d? | 2014-05-19 09:00 A | 2014-05-19 11:00 |  | 33% | 0.17d? | 40.75d |  |  | 3h | 1h |
| 60 | 4.1 | Pedir descripción principal de ficha | 2h? | 2014-05-19 09:00 | 2014-05-19 11:00 |  |  |  | 40.75d |  | Gustavo | 2h |  |
| 61 | 4.2 | Sacar el télefono de la ficha | 1h | 2014-05-19 09:00 A | 2014-05-19 10:00 A |  | 100% |  |  |  | Gustavo | 1h | 1h |
| 62 | 5 | **Fan page Facebook** | 4d? | 2014-07-07 09:00 | 2014-07-10 19:00 | 49 |  |  | 0d |  |  | 26h |  |
| 63 | 5.1 | Subir Fotos | 2h? | 2014-07-07 09:00 | 2014-07-07 11:00 |  |  |  | 3.75d |  | Tamara | 2h |  |
| 64 | 5.2 | Escribir descripción y proposito de fan page | 4h? | 2014-07-08 09:00 | 2014-07-08 13:00 |  |  |  | 2.5d | start no earlier than 2014-07-08 09:00 | Tamara | 4h |  |
| 65 | 5.3 | Comentar a Gonzalo el proposito de la fan page | 4h? | 2014-07-09 09:00 | 2014-07-09 13:00 |  |  |  | 1.5d | start no earlier than 2014-07-09 09:00 | Gustavo | 4h |  |
| 66 | 5.4 | Subir promociones | 8h? | 2014-07-10 09:00 | 2014-07-10 19:00 |  |  |  | 0d | start no earlier than 2014-07-10 09:00 | Gonzalo; Gustavo | 16h |  |
| 67 | 6 | **Tareas Repetitivas** | 1d? | 2014-05-19 09:00 | 2014-05-19 19:00 |  |  |  | 42d |  |  | 40h |  |
| 68 | 6.1 | Actualizar documento de SEO | 8h? | 2014-05-19 09:00 | 2014-05-19 19:00 |  |  |  | 42d | start no earlier than 2014-05-19 09:00 | Gustavo | 8h |  |
| 69 | 6.2 | Probar sitio web en PC | 8h? | 2014-05-19 09:00 | 2014-05-19 19:00 |  |  |  | 42d |  | Tamara; Gustavo | 16h |  |
| 70 | 6.3 | Probar sitio web en dispositivos móviles | 8h? | 2014-05-19 09:00 | 2014-05-19 19:00 |  |  |  | 42d |  | Tamara; Gustavo | 16h |  |
